Schedule from OmniPlan, 2013-08-02 to 2013-10-15.
Project start 2013-08-02

## Resources

| Resource | Group |
| --- | --- |
| Resource 1 | staff |
| Equipment 1 | equipment |
| Material 1 | material |
| Group 1 | group |
| 萍钢 | staff |
| 志泽 | staff |
| 动画 | staff |
| 小一 | staff |
| 夏贝 | staff |
| 红明 | staff |
| 策划 | staff |
| 王刚 | staff |
| 孔聪 | staff |

## Schedule

| ID | WBS | Task | Start | Predecessors | Complete | Resources | Work | Actual work |
| --- | --- | --- | --- | --- | --- | --- | --- | --- |
| 1 | 1 | **技术调研Demo制作** |  |  |  |  |  |  |
| 2 | 1.1 | 选定框架 | 2013-08-05 |  | 100% | 萍钢 | 8h | 8h |
| 3 | 1.2 | 物理引擎Demo | 2013-08-06 | 2 | 100% | 萍钢 | 40h | 40h |
| 4 | 1.3 | DragonBones和Box2D的Demo | 2013-08-13 | 3 | 100% | 萍钢 | 24h | 24h |
| 5 | 1.4 | 粒子引擎Demo | 2013-08-16 | 4 | 100% | 萍钢 | 8h | 8h |
| 6 | 1.5 | Feathersui框架了解 | 2013-08-14 |  | 100% | 孔聪 | 16h | 16h |
| 7 | 1.6 | Alert组件 | 2013-08-19 |  | 100% | 孔聪 | 40h | 40h |
| 8 | 2 | 策划额外讨论 |  |  | 100% |  | 32h | 32h |
| 9 | 3 | **模块1** |  |  |  |  |  |  |
| 10 | 3.1 | 策划 | 2013-09-06 | 8 | 100% | 策划 | 8h | 8h |
| 11 | 3.2 | **场景一** |  |  |  |  |  |  |
| 12 | 3.2.1 | 美术1 | 2013-08-02 |  | 100% | 红明 | 16h | 16h |
| 13 | 3.2.2 | 开发 | 2013-08-19 | 5 | 100% | 萍钢 | 8h | 8h |
| 14 | 3.3 | **场景二** |  |  |  |  |  |  |
| 15 | 3.3.1 | 美术1，服装 | 2013-08-06 |  | 100% | 夏贝 | 16h | 16h |
| 16 | 3.3.2 | 美术2 | 2013-08-06 | 12 | 100% | 红明 | 8h | 8h |
| 17 | 3.3.3 | 开发 | 2013-08-20 | 13 | 100% | 萍钢 | 16h | 16h |
| 18 | 3.3.4 | 小动画 | 2013-08-08 | 15 |  | 志泽 | 8h |  |
| 19 | 3.3.5 | 帽子调整 | 2013-08-21 |  | 100% | 夏贝 | 8h | 8h |
| 20 | 3.4 | **场景三** |  |  |  |  |  |  |
| 21 | 3.4.1 | 美术 | 2013-08-07 | 16 | 100% | 红明 | 4h | 4h |
| 22 | 3.4.2 | 开发 | 2013-08-22 | 17 | 100% | 萍钢 | 8h | 8h |
| 23 | 3.4.3 | 研发细节调整 | 2013-08-23 | 22 | 100% | 萍钢 | 8h | 8h |
| 24 | 4 | **地图** |  |  |  |  |  |  |
| 25 | 4.1 | 美术 | 2013-08-08 | 21 | 80% | 夏贝 | 8h | 6.4h |
| 26 | 4.2 | 策划交互点 | 2013-08-15 | 10 | 80% | 策划 | 4h | 3.2h |
| 27 | 4.3 | 开发 | 2013-08-23 | 22 | 100% | 小一 | 16h | 16h |

Notes:
- 9: 晨起
- 24: 拖拽、数据交互

| ID | WBS | Task | Start | Predecessors | Complete | Resources | Work | Actual work |
| --- | --- | --- | --- | --- | --- | --- | --- | --- |
| 28 | 5 | **个人中心** |  |  |  |  |  |  |
| 29 | 5.1 | 个人中心相关策划 | 2013-08-20 | 43 |  | 策划 | 40h |  |
| 30 | 5.2 | 产品原型 | 2013-08-12 | 38 | 90% | 志泽 | 16h | 14.4h |
| 31 | 5.3 | UI设计 | 2013-08-19 | 40 |  | 夏贝 | 16h |  |
| 32 | 5.4 | 个人信息、成就、收集、游戏入口研发 | 2013-08-22 | 41 |  | 萍钢 | 16h |  |
| 33 | 5.5 | 成就、收集接口 | 2013-08-08 | 42 |  | 小一 | 8h |  |
| 34 | 5.6 | 速成手册 | 2013-08-26 | 32 |  | 萍钢 | 24h |  |
| 35 | 5.7 | 速成手册美术 | 2013-08-19 | 39 |  | 红明 | 8h |  |
| 36 | 5.8 | 制作团队 |  |  |  |  | 8h |  |
| 37 | 6 | **登陆注册** |  |  |  |  |  |  |
| 38 | 6.1 | 产品原型 | 2013-08-08 |  |  | 志泽 | 4h |  |
| 39 | 6.2 | UI风格 | 2013-08-14 | 30 | 50% | 红明 | 16h | 8h |
| 40 | 6.3 | UI设计 | 2013-08-16 | 39 |  | 夏贝 | 1h |  |
| 41 | 6.4 | 前端开发 | 2013-08-21 | 85 |  | 萍钢 | 3h |  |
| 42 | 6.5 | 后台 | 2013-08-02 |  |  | 小一 | 4h |  |
| 43 | 6.6 | 封号默认提供值 | 2013-08-19 | 83 |  | 策划 | 4h |  |
| 44 | 7 | **模块2** |  |  |  |  |  |  |
| 45 | 7.1 | 总策划 | 2013-09-11 | 71 | 100% | 策划 | 24h | 24h |
| 46 | 7.2 | 主场景原画 | 2013-08-19 | 76 | 100% | 红明 | 24h | 24h |
| 47 | 7.3 | 游戏元素原画 | 2013-08-08 | 15 | 100% | 夏贝 | 40h | 40h |
| 48 | 7.4 | 场景一策划 | 2013-08-23 |  | 100% | 志泽 | 16h | 16h |
| 49 | 7.5 | 开发 | 2013-09-06 | 77 | 100% | 萍钢 | 40h | 40h |
| 50 | 7.6 | **模块3** |  |  |  |  |  |  |
| 51 | 7.6.1 | **场景1** |  |  |  |  |  |  |
| 52 | 7.6.1.1 | 美术 | 2013-08-23 | 46 | 50% | 夏贝 | 16h | 8h |
| 53 | 7.6.1.2 | 策划 | 2013-09-16 | 45 | 50% | 策划 | 12h | 6h |
| 54 | 7.6.1.3 | 开发 | 2013-09-13 | 49 |  | 萍钢 | 8h |  |

Notes:
- 28: 个人信息展示：显示封号、用户、注销账号、积分、属性 / 成就 / 收集 / 游戏入口 / 工具：帮助文档、地图 / 制作团队
- 29: 成就体系、收集体系、速成手册、制作团队
- 37: 引子之后出现，不联网不让玩，注册登陆过后就可以不联网玩了 / 封号：默认提供、也可更改 / 用户名 / 密码
- 43: 默认提供、也可更改
- 44: 传膳、做菜、试菜
- 50: 早读

| ID | WBS | Task | Start | Predecessors | Complete | Resources | Work | Actual work |
| --- | --- | --- | --- | --- | --- | --- | --- | --- |
| 55 | 7.6.2 | **场景2** |  |  |  |  |  |  |
| 56 | 7.6.2.1 | 美术 | 2013-08-27 | 52 | 80% | 红明 | 16h | 12.8h |
| 57 | 7.6.2.2 | 策划 | 2013-09-18 | 53 | 100% | 策划 | 12h | 12h |
| 58 | 7.6.2.3 | 开发 | 2013-09-16 | 54 | 60% | 萍钢 | 40h | 24h |
| 59 | 8 | **模块4** |  |  |  |  |  |  |
| 60 | 8.1 | **场景1** |  |  |  |  |  |  |
| 61 | 8.1.1 | 策划 | 2013-09-26 | 98 |  | 策划 | 12h |  |
| 62 | 8.1.2 | 美术 | 2013-09-04 | 99 | 50% | 红明 | 16h | 8h |
| 63 | 8.1.3 | 开发 | 2013-09-29 | 100 |  | 萍钢 | 8h |  |
| 64 | 8.2 | **场景2** |  |  |  |  |  |  |
| 65 | 8.2.1 | 策划 | 2013-09-29 | 61 |  | 策划 | 12h |  |
| 66 | 8.2.2 | 美术 | 2013-09-06 | 62 |  | 红明 | 16h |  |
| 67 | 8.2.3 | 开发 | 2013-10-08 | 63 |  | 萍钢 | 40h |  |
| 68 | 8.2.4 | 动画 |  |  |  |  | 24h |  |
| 69 | 9 | **模块4** |  |  |  |  |  |  |
| 70 | 9.1 | **场景1** |  |  |  |  |  |  |
| 71 | 9.1.1 | 策划 | 2013-09-10 | 10 |  | 策划 | 8h |  |
| 72 | 9.1.2 | 美术 | 2013-08-08 | 21 |  | 红明 | 16h |  |
| 73 | 9.1.3 | 开发 | 2013-08-28 | 22 |  | 萍钢 | 8h |  |
| 74 | 9.2 | **场景2** |  |  |  |  |  |  |
| 75 | 9.2.1 | 策划 | 2013-09-11 | 71 |  | 策划 | 8h |  |
| 76 | 9.2.2 | 美术 | 2013-08-12 | 72 |  | 红明 | 16h |  |
| 77 | 9.2.3 | 开发 | 2013-08-30 | 73 |  | 萍钢 | 40h |  |
| 78 | 10 | **引子** |  |  |  |  |  |  |
| 79 | 10.1 | 故事策划 | 2013-08-08 | 8 | 100% | 策划 | 16h | 16h |
| 80 | 10.2 | 图画 | 2013-08-19 | 79 |  | 红明 | 24h |  |
| 81 | 10.3 | 开发 | 2013-08-19 | 5 |  | 萍钢 | 4h |  |

Notes:
- 55: 选书：圣训、要读的书
- 59: 娱乐
- 60: 外景
- 64: 戏台
- 69: 锻炼
- 70: 练武场、兵器架
- 74: 骑射
- 78: 4-5 / 页图，小狮子动画 / 1 / 个

| ID | WBS | Task | Start | Predecessors | Resources | Work |
| --- | --- | --- | --- | --- | --- | --- |
| 82 | 11 | **首页** |  |  |  |  |
| 83 | 11.1 | 策划 | 2013-08-16 | 79 | 策划 | 4h |
| 84 | 11.2 | 美术 | 2013-08-23 | 80 | 红明 | 24h |
| 85 | 11.3 | 开发 | 2013-08-20 | 81 | 萍钢 | 4h |
| 86 | 12 | **社交分享** |  |  |  |  |
| 87 | 12.1 | 策划分享点和文案 | 2013-10-15 | 91 | 策划 | 24h |
| 88 | 12.2 | 研发 | 2013-08-09 | 33 | 小一 | 8h |
| 89 | 12.3 | UI皮肤 | 2013-08-09 | 25 | 夏贝 | 4h |
| 90 | 13 | **小狮子动画** |  |  |  |  |
| 91 | 13.1 | 多个动作策划，最好跟模块走 | 2013-10-08 | 26 | 策划 | 40h |
| 92 | 14 | **模块5** |  |  |  |  |
| 93 | 14.1 | **场景1** |  |  |  |  |
| 94 | 14.1.1 | 策划 | 2013-09-23 | 57 | 策划 | 12h |
| 95 | 14.1.2 | 美术 | 2013-08-29 | 56 | 红明 | 16h |
| 96 | 14.1.3 | 开发 | 2013-09-24 | 58 | 萍钢 | 8h |
| 97 | 14.2 | **场景2** |  |  |  |  |
| 98 | 14.2.1 | 策划 | 2013-09-25 | 94 | 策划 | 1.5h |
| 99 | 14.2.2 | 美术 | 2013-09-02 | 95 | 红明 | 16h |
| 100 | 14.2.3 | 开发，可写的，可选的 | 2013-09-25 | 96 | 萍钢 | 24h |

Notes:
- 92: 上朝
- 93: 上朝情景
- 97: 批奏折
